# EDT Hipocrates

Schedule from MS Project, 2016-08-29 to 2016-11-14, A marks actual dates.

## Calendars

- Standard: Mon-Fri 09:00-13:00, 15:00-19:00; Sat-Sun off. Exceptions (off unless hours are given): 2016-09-19 (Día de las Glorias del Ejército), 2016-10-10 (Encuentro de Dos Mundos), 2016-10-31 (Día Nacional de las Iglesias Evangélicas y Protestantes), 2016-11-01 (Día de Todos los Santos).

## Resources

| Resource |
| --- |
| Pablo de la Sotta |
| Tomás Muñiz |
| Elías Baeza |
| Gonzalo López |
| Fabián Jaque |

## Schedule

| ID | WBS | Task | Type | Duration | Start | Finish | Predecessors | Complete | Remaining | Total slack | Free slack |
| --- | --- | --- | --- | --- | --- | --- | --- | --- | --- | --- | --- |
| 1 | 1 | **Centro médico "Hipócrates"** |  | 52d | 2016-08-29 A | 2016-11-14 |  | 9% | 47.06d | 0d |  |
| 2 | 1.1 | **Análisis y Planificación** |  | 11d | 2016-08-29 A | 2016-09-12 |  | 93% | 0.75d | 0d |  |
| 3 | 1.1.1 | Toma de requerimientos |  | 2d | 2016-08-29 A | 2016-08-30 A |  | 100% |  |  |  |
| 4 | 1.1.2 | Establecer alcance |  | 3d | 2016-08-31 A | 2016-09-02 A | 3 | 100% |  |  |  |
| 5 | 1.1.3 | Generar ERS |  | 3d | 2016-09-05 A | 2016-09-07 A | 4 | 100% |  |  |  |
| 6 | 1.1.4 | Modelado de procesos |  | 3d | 2016-09-08 A | 2016-09-12 | 5 | 75% | 0.75d | -1d | 0d |
| 7 | 1.2 | **Diseño de procesos** |  | 5d | 2016-09-13 | 2016-09-20 | 2 |  |  | -1d | 0d |
| 8 | 1.2.1 | **Diseño modelo lógico** |  | 4d | 2016-09-13 | 2016-09-16 |  |  |  | -1d | 0d |
| 9 | 1.2.1.1 | Analizar procesos actuales |  | 2d | 2016-09-13 | 2016-09-14 |  |  |  | -1d | 0d |
| 10 | 1.2.1.2 | Determinar procesos necesarios para el software |  | 2d | 2016-09-15 | 2016-09-16 | 9 |  |  | -1d | 0d |
| 11 | 1.2.2 | Diseñar modelo físico |  | 1d | 2016-09-20 | 2016-09-20 | 8 |  |  | -1d | 0d |
| 12 | 1.3 | **Estructuración** |  | 2d | 2016-09-21 | 2016-09-22 | 7 |  |  | 34d |  |
| 13 | 1.3.1 | Recopilación de los datos existentes del centro médico |  | 2d | 2016-09-21 | 2016-09-22 |  |  |  | 34d |  |
| 14 | 1.3.2 | Limpieza de datos no-reutilizables de la clínica |  | 2d | 2016-09-21 | 2016-09-22 |  |  |  | 34d |  |
| 15 | 1.4 | **Adquisiciones** |  | 2d | 2016-09-21 | 2016-09-22 | 7 |  |  | -1d | 0d |
| 16 | 1.4.1 | Adquisición de recursos tecnológicos |  | 1d | 2016-09-21 | 2016-09-21 |  |  |  | -1d | 0d |
| 17 | 1.4.2 | Adquisición de recursos físicos |  | 1d | 2016-09-21 | 2016-09-21 |  |  |  | 34d | 0d |
| 18 | 1.4.3 | Instalación de recursos físicos |  | 1d | 2016-09-22 | 2016-09-22 | 17 |  |  | 34d |  |
| 19 | 1.5 | **Construcción** |  | 16d | 2016-09-21 | 2016-10-13 | 16 |  |  | 0d |  |
| 20 | 1.5.1 | Fin iteración 1 | milestone, manual | 0d | 2016-09-21 | 2016-09-21 |  |  |  |  |  |
| 21 | 1.5.2 | **Desarrollo de aplicaciones** |  | 12d | 2016-09-22 | 2016-10-07 |  |  |  | 0d |  |
| 22 | 1.5.2.1 | Desarrollo módulo ingreso de pacientes |  | 2d | 2016-09-22 | 2016-09-23 |  |  |  | 2d | 0d |
| 23 | 1.5.2.2 | Desarrollo módulo agendamiento de horas |  | 5d | 2016-09-26 | 2016-09-30 | 22 |  |  | 2d | 0d |
| 24 | 1.5.2.3 | Desarrollo módulo agenda personal |  | 3d | 2016-10-03 | 2016-10-05 | 23 |  |  | 2d |  |
| 25 | 1.5.2.4 | Desarrollo módulo registro de paciente |  | 2d | 2016-09-22 | 2016-09-23 |  |  |  | 0d |  |
| 26 | 1.5.2.5 | Desarrollo módulo ficha médica |  | 3d | 2016-09-26 | 2016-09-28 | 25 |  |  | 0d |  |
| 27 | 1.5.2.6 | Desarrollo módulo post atención |  | 2d | 2016-09-29 | 2016-09-30 | 26 |  |  | 0d |  |
| 28 | 1.5.2.7 | Desarrollo módulo consultas especialistas |  | 2d | 2016-10-03 | 2016-10-04 | 27 |  |  | 0d |  |
| 29 | 1.5.2.8 | Desarrollo módulo mantenedores |  | 3d | 2016-10-05 | 2016-10-07 | 28 |  |  | 0d |  |
| 30 | 1.5.2.9 | Desarrollo módulo de cajas |  | 3d | 2016-09-22 | 2016-09-26 |  |  |  | 1d | 0d |
| 31 | 1.5.2.10 | Desarrollo módulo de anulaciones |  | 3d | 2016-09-27 | 2016-09-29 | 30 |  |  | 1d | 0d |
| 32 | 1.5.2.11 | Desarrollo módulo pago de honorarios |  | 3d | 2016-09-30 | 2016-10-04 | 31 |  |  | 1d | 0d |
| 33 | 1.5.2.12 | Desarrollo módulo reporte de ingreso |  | 2d | 2016-10-05 | 2016-10-06 | 32 |  |  | 1d |  |
| 34 | 1.5.3 | Programación de base de datos |  | 12d | 2016-09-22 | 2016-10-07 |  |  |  | 0d |  |
| 35 | 1.5.4 | Integración de aplicaciones |  | 3d | 2016-10-11 | 2016-10-13 | 21, 34 |  |  | 0d |  |
| 36 | 1.5.5 | Generación de documentación y planes de prueba |  | 15d | 2016-09-22 | 2016-10-13 |  |  |  | 0d |  |

Notes:
- 19: Para esta tarea se considera: / ·3 integrantes trabajando en programación del software / ·1 integrante trabajando en la programación de la base de datos / ·1 integrante trabajando en la documentación / Se tiene una holgura de 5 días antes de comenzar la tarea Testing

| ID | WBS | Task | Type | Duration | Start | Finish | Predecessors | Total slack |
| --- | --- | --- | --- | --- | --- | --- | --- | --- |
| 37 | 1.6 | **Testing** |  | 8d | 2016-10-21 | 2016-11-03 | 19FS+5d | 0d |
| 38 | 1.6.1 | Caja negra |  | 3d | 2016-10-21 | 2016-10-25 |  | 0d |
| 39 | 1.6.2 | Caja blanca |  | 2d | 2016-10-21 | 2016-10-24 |  | 1d |
| 40 | 1.6.3 | Corrección de errores |  | 5d | 2016-10-26 | 2016-11-03 | 38, 39 | 0d |
| 41 | 1.6.4 | Fin iteración 2 | milestone, manual | 0d | 2016-10-24 | 2016-10-24 |  |  |
| 42 | 1.7 | **Migración** |  | 3d | 2016-11-04 | 2016-11-08 | 37 | 0d |
| 43 | 1.7.1 | **Carga de información** |  | 3d | 2016-11-04 | 2016-11-08 |  | 0d |
| 44 | 1.7.1.1 | Registrar datos análogos |  | 3d | 2016-11-04 | 2016-11-08 |  | 0d |
| 45 | 1.7.1.2 | Registro de pacientes nuevos |  | 2d | 2016-11-04 | 2016-11-07 |  | 1d |
| 46 | 1.8 | **Implementación** |  | 3d | 2016-11-09 | 2016-11-11 | 42 | 0d |
| 47 | 1.8.1 | Implementación de sistema en toda la empresa |  | 1d | 2016-11-09 | 2016-11-09 |  | 2d |
| 48 | 1.8.2 | Capacitación del personal |  | 1d | 2016-11-09 | 2016-11-09 |  | 2d |
| 49 | 1.8.3 | Marcha blanca |  | 3d | 2016-11-09 | 2016-11-11 |  | 0d |
| 50 | 1.9 | **Cierre** |  | 1d | 2016-11-14 | 2016-11-14 | 46 | 0d |
| 51 | 1.9.1 | Entrega de documentación |  | 1d | 2016-11-14 | 2016-11-14 |  | 0d |
| 52 | 1.9.2 | Generar acta de cierre |  | 1d | 2016-11-14 | 2016-11-14 |  | 0d |
| 53 | 1.9.3 | Fin iteración 3 | milestone, manual | 0d | 2016-11-14 | 2016-11-14 |  |  |
